# Instrumentación para monitoreo de redes de telefonía móvil

Schedule from MS Project, 2020-07-20 to 2021-10-29, A marks actual dates.

## Calendars

- Estándar: Mon-Fri 09:00-13:00, 15:00-19:00; Sat-Sun off.

## Schedule

| ID | WBS | Task | Type | Duration | Start | Finish | Predecessors | Complete | Remaining | Total slack | Constraint |
| --- | --- | --- | --- | --- | --- | --- | --- | --- | --- | --- | --- |
| 1 | 1 | Definición de requerimientos |  | 10d | 2020-07-20 A | 2020-07-31 A |  | 100% |  |  | start no earlier than 2020-07-20 |
| 2 | 2 | Relevamiento de soluciones existentes |  | 10d | 2020-08-03 A | 2020-08-14 A | 1 | 100% |  |  |  |
| 3 | 3 | Diseño de Arquitectura |  | 10d | 2020-08-17 A | 2020-08-28 A | 2 | 100% |  |  |  |
| 4 | 4 | Selección de componentes de cada bloque de la arquitectura |  | 60d | 2020-08-31 A | 2020-11-20 | 3 | 70% | 18d | 245d |  |
| 5 | 5 | Hoja 1 - Esquemático - FrontEnd |  | 40d | 2021-01-11 | 2021-03-05 |  |  |  | 140d | start no earlier than 2021-01-11 |
| 6 | 6 | Hoja 2 - Esquemático - Tranceptor |  | 40d | 2021-01-11 | 2021-03-05 |  |  |  | 0d | start no earlier than 2021-01-11 |
| 7 | 7 | Hoja 3 - Esquemático - MCU |  | 30d | 2021-03-08 | 2021-04-16 | 6 |  |  | 0d |  |
| 8 | 8 | Primer esquematico terminado | milestone | 0d | 2021-04-16 | 2021-04-16 | 7 |  |  | 0d |  |
| 9 | 9 | Elaboración del PCB |  | 30d | 2021-04-19 | 2021-05-28 | 8 |  |  | 0d |  |
| 10 | 10 | **Tests unitarios y ajustes** |  | 50d | 2021-05-31 | 2021-08-06 | 9 |  |  | 0d |  |
| 11 | 10.1 | Alimentación |  | 10d | 2021-05-31 | 2021-06-11 | 9 |  |  | 0d |  |
| 12 | 10.2 | Recepción |  | 10d | 2021-06-14 | 2021-06-25 | 11 |  |  | 0d |  |
| 13 | 10.3 | Filtros y adquisición |  | 10d | 2021-06-28 | 2021-07-09 | 12 |  |  | 0d |  |
| 14 | 10.4 | Procesamiento |  | 10d | 2021-07-12 | 2021-07-23 | 13 |  |  | 0d |  |
| 15 | 10.5 | comunicación / interfaz PC |  | 10d | 2021-07-26 | 2021-08-06 | 14 |  |  | 0d |  |
| 16 | 11 | Test completo |  | 30d | 2021-08-09 | 2021-09-17 | 15 |  |  | 0d |  |
| 17 | 12 | Diseño completamente funcional | milestone | 0d | 2021-09-17 | 2021-09-17 | 16 |  |  | 30d |  |
| 18 | 13 | Testeo con equipo patrón |  | 10d | 2021-09-20 | 2021-10-01 | 16 |  |  | 0d |  |
| 19 | 14 | Redacción de Proyecto |  | 15d | 2021-10-04 | 2021-10-22 | 18 |  |  | 0d |  |
| 20 | 15 | Difusión del proyecto |  | 5d | 2021-10-25 | 2021-10-29 | 19, 18 |  |  | 0d |  |
| 21 | 16 | Presentación ante la cátedra | milestone | 0d | 2021-10-29 | 2021-10-29 | 20 |  |  | 0d |  |
