# Instrumentación para monitoreo de redes de telefonía móvil

Schedule from MS Project, 2020-07-20 to 2021-09-17, A marks actual dates.

## Calendars

- Estándar: Mon-Fri 09:00-13:00, 15:00-19:00; Sat-Sun off.

## Schedule

| ID | WBS | Task | Type | Duration | Start | Finish | Predecessors | Complete | Remaining | Total slack | Constraint |
| --- | --- | --- | --- | --- | --- | --- | --- | --- | --- | --- | --- |
| 1 | 1 | Definición de requerimientos |  | 10d | 2020-07-20 A | 2020-07-31 A |  | 100% |  |  | start no earlier than 2020-07-20 |
| 2 | 2 | Relevamiento de soluciones existentes |  | 10d | 2020-08-03 A | 2020-08-14 A | 1 | 100% |  |  |  |
| 3 | 3 | Diseño de Arquitectura |  | 10d | 2020-08-17 A | 2020-08-28 A | 2 | 100% |  |  |  |
| 4 | 4 | Selección de componentes de cada bloque de la arquitectura |  | 60d | 2020-08-31 A | 2020-11-20 | 3 | 70% | 18d | 0d |  |
| 5 | 5 | Primer esquematico terminado | milestone | 0d | 2020-11-20 | 2020-11-20 | 4 |  |  | 215d |  |
| 6 | 6 | **Simulaciones** |  | 75d | 2020-11-23 | 2021-03-05 | 4 |  |  | 0d |  |
| 7 | 6.1 | Alimentación |  | 15d | 2020-11-23 | 2020-12-11 |  |  |  | 0d |  |
| 8 | 6.2 | Recepción |  | 15d | 2020-12-14 | 2021-01-01 | 7 |  |  | 0d |  |
| 9 | 6.3 | Filtros y adquisición |  | 15d | 2021-01-04 | 2021-01-22 | 8 |  |  | 0d |  |
| 10 | 6.4 | Procesamiento |  | 15d | 2021-01-25 | 2021-02-12 | 9 |  |  | 0d |  |
| 11 | 6.5 | comunicación / interfaz PC |  | 15d | 2021-02-15 | 2021-03-05 | 10 |  |  | 0d |  |
| 12 | 7 | **Tests unitarios y ajustes** |  | 75d | 2021-03-08 | 2021-06-18 | 6 |  |  | 0d |  |
| 13 | 7.1 | Alimentación |  | 15d | 2021-03-08 | 2021-03-26 |  |  |  | 0d |  |
| 14 | 7.2 | Recepción |  | 15d | 2021-03-29 | 2021-04-16 | 13 |  |  | 0d |  |
| 15 | 7.3 | Filtros y adquisición |  | 15d | 2021-04-19 | 2021-05-07 | 14 |  |  | 0d |  |
| 16 | 7.4 | Procesamiento |  | 15d | 2021-05-10 | 2021-05-28 | 15 |  |  | 0d |  |
| 17 | 7.5 | comunicación / interfaz PC |  | 15d | 2021-05-31 | 2021-06-18 | 16 |  |  | 0d |  |
| 18 | 8 | Integración (fisica) |  | 20d | 2021-06-21 | 2021-07-16 | 12 |  |  | 0d |  |
| 19 | 9 | Test completo |  | 25d | 2021-07-19 | 2021-08-20 | 18 |  |  | 0d |  |
| 20 | 10 | Diseño completamente funcional | milestone | 0d | 2021-08-20 | 2021-08-20 | 19 |  |  | 20d |  |
| 21 | 11 | Testeo con equipo patrón |  | 10d | 2021-08-23 | 2021-09-03 | 19 |  |  | 0d |  |
| 22 | 12 | Difusión del proyecto |  | 10d | 2021-09-06 | 2021-09-17 | 21 |  |  | 0d |  |
| 23 | 13 | Presentación ante la cátedra | milestone | 0d | 2021-09-17 | 2021-09-17 | 22 |  |  | 0d |  |
